# Nuevo Cronograma de Actividades

Schedule from MS Project, 2017-06-19 to 2017-09-30, 4 hours a day, costs in S/., A marks actual dates.

## Calendars

- Calendario PET-2017: Mon-Sat 20:30-23:30; Sun off. Exceptions (off unless hours are given): 2017-06-29 (San pedro), 2017-07-28 to 2017-07-29 (Fiestas Patrias).

## Resources

| Resource | Rate |
| --- | --- |
| Analista | 20 |
| Programador | 16 |
| Tester | 16 |

## Schedule

| ID | WBS | Task | Duration | Start | Finish | Predecessors | Complete | Resources | Work | Actual work | Cost | Actual cost | Real Comienzo | Real Fin |
| --- | --- | --- | --- | --- | --- | --- | --- | --- | --- | --- | --- | --- | --- | --- |
| 1 | 1 | **Sistema de Gestión de incidencias** | 65.25d? | 2017-06-19 19:30 A | 2017-09-30 23:30 A |  | 100% |  | 482h | 482h | 8,552 | 8,552 | lun 19/06/17 | sáb 30/09/17 |
| 2 | 1.1 | **Análisis** | 7.5d? | 2017-06-19 19:30 A | 2017-06-30 23:30 A |  | 100% |  | 75h | 75h | 1,344 | 1,344 | lun 19/06/17 | vie 30/06/17 |
| 3 | 1.1.1 | **Especificación de requisitos** | 5.25d | 2017-06-19 19:30 A | 2017-06-26 23:30 A |  | 100% |  | 55h | 55h | 984 | 984 | lun 19/06/17 | lun 26/06/17 |
| 4 | 1.1.1.1 | Entrevistas | 1.5d | 2017-06-19 19:30 A | 2017-06-20 23:30 A |  | 100% | Analista | 6h | 6h | 120 | 120 | lun 19/06/17 | mar 20/06/17 |
| 5 | 1.1.1.2 | Cuestionarios | 0.75d | 2017-06-19 19:30 A | 2017-06-19 23:30 A | 4SS | 100% | Programador | 3h | 3h | 48 | 48 | lun 19/06/17 | lun 19/06/17 |
| 6 | 1.1.1.3 | Encuestas | 1d | 2017-06-19 19:30 A | 2017-06-20 23:30 A | 5 | 100% | Programador | 4h | 4h | 64 | 64 | lun 19/06/17 | mar 20/06/17 |
| 7 | 1.1.1.4 | Diagrama de Contexto | 0.5d | 2017-06-20 19:30 A | 2017-06-20 23:30 A | 6 | 100% | Programador | 2h | 2h | 32 | 32 | mar 20/06/17 | mar 20/06/17 |
| 8 | 1.1.1.5 | Diagrama de casos de uso | 1.5d | 2017-06-21 19:30 A | 2017-06-22 23:30 A | 7 | 100% | Analista; Programador | 12h | 12h | 216 | 216 | mié 21/06/17 | jue 22/06/17 |
| 9 | 1.1.1.6 | Contratos | 1.25d | 2017-06-22 19:30 A | 2017-06-23 23:30 A | 8 | 100% | Analista; Programador | 10h | 10h | 180 | 180 | jue 22/06/17 | vie 23/06/17 |
| 10 | 1.1.1.7 | Diagrama de Actividades | 1d | 2017-06-23 19:30 A | 2017-06-24 23:30 A | 9 | 100% | Analista; Programador | 8h | 8h | 144 | 144 | vie 23/06/17 | sáb 24/06/17 |
| 11 | 1.1.1.8 | Diagrama de Comunicación | 0.5d | 2017-06-24 19:30 A | 2017-06-24 23:30 A | 10 | 100% | Analista; Programador | 4h | 4h | 72 | 72 | sáb 24/06/17 | sáb 24/06/17 |
| 12 | 1.1.1.9 | Matriz de Trazabilidad | 0.75d | 2017-06-26 19:30 A | 2017-06-26 23:30 A | 11 | 100% | Analista; Programador | 6h | 6h | 108 | 108 | lun 26/06/17 | lun 26/06/17 |
| 13 | 1.1.2 | Requisitos Funcionales | 1d? | 2017-06-26 19:30 A | 2017-06-27 23:30 A | 3 | 100% | Analista; Programador | 8h | 8h | 144 | 144 | lun 26/06/17 | mar 27/06/17 |
| 14 | 1.1.3 | Requisitos no Funcionales | 1.5d? | 2017-06-28 19:30 A | 2017-06-30 23:30 A | 13 | 100% | Analista; Programador | 12h | 12h | 216 | 216 | mié 28/06/17 | vie 30/06/17 |
| 15 | 1.2 | **Diseño** | 7.5d? | 2017-07-01 19:30 A | 2017-07-12 23:30 A | 2 | 100% |  | 79h | 79h | 1,400 | 1,400 | sáb 01/07/17 | mié 12/07/17 |
| 16 | 1.2.1 | **Diseño del sistema** | 2.25d | 2017-07-01 19:30 A | 2017-07-04 23:30 A |  | 100% |  | 21h | 21h | 372 | 372 | sáb 01/07/17 | mar 04/07/17 |
| 17 | 1.2.1.1 | Diagrama de Secuencia | 0.75d | 2017-07-01 19:30 A | 2017-07-01 23:30 A |  | 100% | Programador | 3h | 3h | 48 | 48 | sáb 01/07/17 | sáb 01/07/17 |
| 18 | 1.2.1.2 | Diagrama de Clases | 1d | 2017-07-01 19:30 A | 2017-07-03 23:30 A | 17 | 100% | Analista; Programador | 8h | 8h | 144 | 144 | sáb 01/07/17 | lun 03/07/17 |
| 19 | 1.2.1.3 | Diagrama de Componentes | 0.5d | 2017-07-03 19:30 A | 2017-07-03 23:30 A | 18 | 100% | Analista; Programador | 4h | 4h | 72 | 72 | lun 03/07/17 | lun 03/07/17 |
| 20 | 1.2.1.4 | Diagrama de Despliegue | 0.75d | 2017-07-04 19:30 A | 2017-07-04 23:30 A | 19 | 100% | Analista; Programador | 6h | 6h | 108 | 108 | mar 04/07/17 | mar 04/07/17 |
| 21 | 1.2.2 | Arquitectura del sistema | 1d | 2017-07-04 19:30 A | 2017-07-05 23:30 A | 16 | 100% |  |  |  |  |  | mar 04/07/17 | mié 05/07/17 |
| 22 | 1.2.3 | **Diseño de interfaces** | 3.75d | 2017-07-05 19:30 A | 2017-07-10 23:30 A | 21 | 100% |  | 42h | 42h | 740 | 740 | mié 05/07/17 | lun 10/07/17 |
| 23 | 1.2.3.1 | Menu | 0.5d | 2017-07-05 19:30 A | 2017-07-05 23:30 A |  | 100% | Programador | 2h | 2h | 32 | 32 | mié 05/07/17 | mié 05/07/17 |
| 24 | 1.2.3.2 | Nueva Incidencia | 0.25d | 2017-07-05 19:30 A | 2017-07-05 23:30 A | 23 | 100% | Programador | 1h | 1h | 16 | 16 | mié 05/07/17 | mié 05/07/17 |
| 25 | 1.2.3.3 | Listado de Incidencias | 0.5d | 2017-07-05 19:30 A | 2017-07-05 23:30 A | 24SS | 100% | Analista | 2h | 2h | 40 | 40 | mié 05/07/17 | mié 05/07/17 |
| 26 | 1.2.3.4 | Autenticación | 0.75d | 2017-07-06 19:30 A | 2017-07-06 23:30 A | 25 | 100% | Programador | 3h | 3h | 48 | 48 | jue 06/07/17 | jue 06/07/17 |
| 27 | 1.2.3.5 | Autoayuda | 0.5d | 2017-07-06 19:30 A | 2017-07-06 23:30 A | 26 | 100% | Analista | 2h | 2h | 40 | 40 | jue 06/07/17 | jue 06/07/17 |
| 28 | 1.2.3.6 | Clasificar incidencias | 0.75d | 2017-07-06 19:30 A | 2017-07-06 23:30 A | 27SS | 100% | Programador | 3h | 3h | 48 | 48 | jue 06/07/17 | jue 06/07/17 |
| 29 | 1.2.3.7 | Escalar incidencia | 0.5d | 2017-07-06 19:30 A | 2017-07-06 23:30 A | 28 | 100% | Programador | 2h | 2h | 32 | 32 | jue 06/07/17 | jue 06/07/17 |
| 30 | 1.2.3.8 | Priorizar Incidencia | 0.75d | 2017-07-07 19:30 A | 2017-07-07 23:30 A | 29 | 100% | Analista | 3h | 3h | 60 | 60 | vie 07/07/17 | vie 07/07/17 |
| 31 | 1.2.3.9 | Gestionar áreas | 0.5d | 2017-07-07 19:30 A | 2017-07-07 23:30 A | 30 | 100% | Analista | 2h | 2h | 40 | 40 | vie 07/07/17 | vie 07/07/17 |
| 32 | 1.2.3.10 | Gestionar Usuarios | 0.25d | 2017-07-07 19:30 A | 2017-07-07 23:30 A | 31 | 100% | Analista | 1h | 1h | 20 | 20 | vie 07/07/17 | vie 07/07/17 |
| 33 | 1.2.3.11 | Gestionar Categoria | 0.75d | 2017-07-07 19:30 A | 2017-07-07 23:30 A | 32SS | 100% | Programador | 3h | 3h | 48 | 48 | vie 07/07/17 | vie 07/07/17 |
| 34 | 1.2.3.12 | Alimentar base conocimiento | 0.75d | 2017-07-08 19:30 A | 2017-07-08 23:30 A | 33 | 100% | Programador | 3h | 3h | 48 | 48 | sáb 08/07/17 | sáb 08/07/17 |
| 35 | 1.2.3.13 | Resolución de incidencia | 0.5d | 2017-07-08 19:30 A | 2017-07-08 23:30 A | 34 | 100% | Programador | 2h | 2h | 32 | 32 | sáb 08/07/17 | sáb 08/07/17 |
| 36 | 1.2.3.14 | Cierre de incidencia | 0.25d | 2017-07-08 19:30 A | 2017-07-08 23:30 A | 35 | 100% | Analista | 1h | 1h | 20 | 20 | sáb 08/07/17 | sáb 08/07/17 |
| 37 | 1.2.3.15 | Reporte incidencias comunes | 0.75d | 2017-07-10 19:30 A | 2017-07-10 23:30 A | 36 | 100% | Analista; Programador | 6h | 6h | 108 | 108 | lun 10/07/17 | lun 10/07/17 |
| 38 | 1.2.3.16 | Reporte incidencias no resueltas | 0.5d | 2017-07-10 19:30 A | 2017-07-10 23:30 A | 37 | 100% | Analista; Programador | 4h | 4h | 72 | 72 | lun 10/07/17 | lun 10/07/17 |
| 39 | 1.2.3.17 | Reporte incidencias por usuario | 0.25d | 2017-07-10 19:30 A | 2017-07-10 23:30 A | 38 | 100% | Analista; Programador | 2h | 2h | 36 | 36 | lun 10/07/17 | lun 10/07/17 |
| 40 | 1.2.4 | Diseño lógico de base de datos | 1.5d? | 2017-07-11 19:30 A | 2017-07-12 23:30 A | 22 | 100% | Analista; Programador | 12h | 12h | 216 | 216 | mar 11/07/17 | mié 12/07/17 |
| 41 | 1.2.5 | Caso de pruebas | 0.5d | 2017-07-12 19:30 A | 2017-07-12 23:30 A | 40 | 100% | Analista; Programador | 4h | 4h | 72 | 72 | mié 12/07/17 | mié 12/07/17 |

| ID | WBS | Task | Duration | Start | Finish | Predecessors | Complete | Resources | Work | Actual work | Cost | Actual cost | Real Comienzo | Real Fin |
| --- | --- | --- | --- | --- | --- | --- | --- | --- | --- | --- | --- | --- | --- | --- |
| 42 | 1.3 | **Construcción** | 29.25d? | 2017-07-13 19:30 A | 2017-08-29 23:30 A | 15 | 100% |  | 205h | 205h | 3,724 | 3,724 | jue 13/07/17 | mar 29/08/17 |
| 43 | 1.3.1 | Ambiente de desarrollo | 1.5d? | 2017-07-13 19:30 A | 2017-07-14 23:30 A |  | 100% | Analista; Programador | 12h | 12h | 216 | 216 | jue 13/07/17 | vie 14/07/17 |
| 44 | 1.3.2 | **Procesos de usuario** | 2.25d | 2017-07-14 19:30 A | 2017-07-17 23:30 A | 43 | 100% |  | 16h | 16h | 288 | 288 | vie 14/07/17 | lun 17/07/17 |
| 45 | 1.3.2.1 | Registro de Incidencia | 2d | 2017-07-14 19:30 A | 2017-07-17 23:30 A |  | 100% | Analista; Programador | 16h | 16h | 288 | 288 | vie 14/07/17 | lun 17/07/17 |
| 46 | 1.3.3 | **Procesos principales** | 9d | 2017-07-18 19:30 A | 2017-08-02 23:30 A | 44 | 100% |  | 71h | 71h | 1,264 | 1,264 | mar 18/07/17 | mié 02/08/17 |
| 47 | 1.3.3.1 | Clasificar incidencia | 1.5d | 2017-07-18 19:30 A | 2017-07-19 23:30 A |  | 100% | Programador | 6h | 6h | 96 | 96 | mar 18/07/17 | mié 19/07/17 |
| 48 | 1.3.3.2 | Escalar incidencia | 2.25d | 2017-07-18 19:30 A | 2017-07-20 23:30 A | 47SS | 100% | Analista | 9h | 9h | 180 | 180 | mar 18/07/17 | jue 20/07/17 |
| 49 | 1.3.3.3 | Priorizar incidencia | 2.5d | 2017-07-20 19:30 A | 2017-07-24 23:30 A | 48 | 100% | Programador | 10h | 10h | 160 | 160 | jue 20/07/17 | lun 24/07/17 |
| 50 | 1.3.3.4 | Gestionar usuario | 1.25d | 2017-07-24 19:30 A | 2017-07-25 23:30 A | 49 | 100% | Analista; Programador | 10h | 10h | 180 | 180 | lun 24/07/17 | mar 25/07/17 |
| 51 | 1.3.3.5 | Gestionar Categoria | 2.5d | 2017-07-25 19:30 A | 2017-07-31 23:30 A | 50 | 100% | Analista; Programador | 20h | 20h | 360 | 360 | mar 25/07/17 | lun 31/07/17 |
| 52 | 1.3.3.6 | Gestionar área | 2d | 2017-07-31 19:30 A | 2017-08-02 23:30 A | 51 | 100% | Analista; Programador | 16h | 16h | 288 | 288 | lun 31/07/17 | mié 02/08/17 |
| 53 | 1.3.4 | **Procesos intermedios** | 5.25d | 2017-08-03 19:30 A | 2017-08-10 23:30 A | 46 | 100% |  | 44h | 44h | 792 | 792 | jue 03/08/17 | jue 10/08/17 |
| 54 | 1.3.4.1 | Alimentar base de conocimiento | 2.25d | 2017-08-03 19:30 A | 2017-08-05 23:30 A |  | 100% | Analista; Programador | 18h | 18h | 324 | 324 | jue 03/08/17 | sáb 05/08/17 |
| 55 | 1.3.4.2 | Resolución de incidencias | 3.25d | 2017-08-05 19:30 A | 2017-08-10 23:30 A | 54 | 100% | Analista; Programador | 26h | 26h | 468 | 468 | sáb 05/08/17 | jue 10/08/17 |
| 56 | 1.3.5 | **Procesos complementarios** | 3d | 2017-08-10 19:30 A | 2017-08-14 23:30 A | 53 | 100% |  | 20h | 20h | 360 | 360 | jue 10/08/17 | lun 14/08/17 |
| 57 | 1.3.5.1 | Cierre de incidencias | 2.5d | 2017-08-10 19:30 A | 2017-08-14 23:30 A |  | 100% | Analista; Programador | 20h | 20h | 360 | 360 | jue 10/08/17 | lun 14/08/17 |
| 58 | 1.3.6 | **Generación de reportes** | 10.5d | 2017-08-14 19:30 A | 2017-08-29 23:30 A | 56 | 100% |  | 42h | 42h | 804 | 804 | lun 14/08/17 | mar 29/08/17 |
| 59 | 1.3.6.1 | Reportes de incidencias comunes | 2d | 2017-08-14 19:30 A | 2017-08-16 23:30 A |  | 100% | Analista | 8h | 8h | 160 | 160 | lun 14/08/17 | mié 16/08/17 |
| 60 | 1.3.6.2 | Reporte de incidencias por usuario | 2.25d | 2017-08-17 19:30 A | 2017-08-19 23:30 A | 59 | 100% | Programador | 9h | 9h | 144 | 144 | jue 17/08/17 | sáb 19/08/17 |
| 61 | 1.3.6.3 | Reporte de incidencias por rango de fechas | 6.25d | 2017-08-19 19:30 A | 2017-08-29 23:30 A | 60 | 100% | Analista | 25h | 25h | 500 | 500 | sáb 19/08/17 | sab 09/09/17 |
| 62 | 1.4 | **Pruebas** | 15d | 2017-08-29 19:30 A | 2017-09-20 23:30 A | 42 | 100% |  | 66h | 66h | 1,056 | 1,056 | lun 11/09/17 | sab 23/09/17 |
| 63 | 1.4.1 | Ambiente de pruebas | 2.5d | 2017-08-29 19:30 A | 2017-09-01 23:30 A |  | 100% | Tester | 10h | 10h | 160 | 160 | lun 11/08/17 | mie 13/09/17 |
| 64 | 1.4.2 | Pruebas unitarias | 3.5d | 2017-09-01 19:30 A | 2017-09-06 23:30 A | 63 | 100% | Tester | 14h | 14h | 224 | 224 | mie 13/09/17 | sab 16/09/17 |
| 65 | 1.4.3 | Pruebas de integración | 3.5d | 2017-09-06 19:30 A | 2017-09-11 23:30 A | 64 | 100% | Tester | 14h | 14h | 224 | 224 | lun 18/09/17 | mie 20/09/17 |
| 66 | 1.4.4 | Pruebas integrales | 3.5d | 2017-09-11 19:30 A | 2017-09-15 23:30 A | 65 | 100% | Tester | 14h | 14h | 224 | 224 | mie 20/09/17 | sab 23/09/17 |
| 67 | 1.4.5 | Pruebas de estres | 3.5d | 2017-09-15 19:30 A | 2017-09-20 23:30 A | 66 | 100% | Tester | 14h | 14h | 224 | 224 |  |  |

| ID | WBS | Task | Duration | Start | Finish | Predecessors | Complete | Constraint | Resources | Work | Actual work | Cost | Actual cost | Real Comienzo | Real Fin |
| --- | --- | --- | --- | --- | --- | --- | --- | --- | --- | --- | --- | --- | --- | --- | --- |
| 68 | 1.5 | **Producción** | 4.5d | 2017-09-20 19:30 A | 2017-09-26 23:30 A | 62 | 100% |  |  | 27h | 27h | 488 | 488 | lun 25/09/17 | sab 30/09/17 |
| 69 | 1.5.1 | **Puesta en producción** | 3.75d | 2017-09-20 19:30 A | 2017-09-25 23:30 A |  | 100% |  |  | 22h | 22h | 408 | 408 | mié 25/09/17 | jue 28/09/17 |
| 70 | 1.5.1.1 | Configurar base de datos | 2d | 2017-09-20 19:30 A | 2017-09-22 23:30 A |  | 100% |  | Analista; Programador | 16h | 16h | 288 | 288 | mié 25/09/17 | mie 27/09/17 |
| 71 | 1.5.1.2 | Subir el sistema al hosting | 1.5d | 2017-09-23 19:30 A | 2017-09-25 23:30 A | 70 | 100% |  | Analista | 6h | 6h | 120 | 120 | mie 27/09/17 | jue 28/09/17 |
| 72 | 1.5.2 | Pruebas posproducción | 1.25d | 2017-09-25 19:30 A | 2017-09-26 23:30 A | 69 | 100% |  | Tester | 5h | 5h | 80 | 80 | vie 29/09/17 | mar 30/09/17 |
| 73 | 1.6 | **Mantenimiento** | 3.75d | 2017-09-26 19:30 A | 2017-09-30 23:30 A | 68 | 100% |  |  | 30h | 30h | 540 | 540 | lun 02/10/17 | sáb 07/10/17 |
| 74 | 1.6.1 | Preventivo | 2.5d | 2017-09-26 19:30 A | 2017-09-29 23:30 A |  | 100% |  | Analista; Programador | 20h | 20h | 360 | 360 | lun 02/10/17 | mie 04/10/17 |
| 75 | 1.6.2 | Correctivo | 1.25d | 2017-09-29 19:30 A | 2017-09-30 23:30 A | 74 | 100% | finish no earlier than 2017-06-20 23:30 | Analista; Programador | 10h | 10h | 180 | 180 | mie 04/10/17 | sáb 07/10/17 |
